# Main Assessment Model ERS Nov 2014.mpp

Schedule from MS Project, 2020-10-12 to 2021-04-01, 7 hours a day, costs in £.

## Calendars

- Working calendar B.N.: Mon-Fri 08:30-12:00, 13:00-16:30; Sat-Sun off.

## Resources

| Resource | Group | Rate |
| --- | --- | --- |
| Andrew Coburn | Web Designer | 40 |
| Autumn Lark | Web Developer | 35 |
| Aimee Laing | Web Developer | 35 |
| James Lee | Web Designer | 35 |
| Hannah McCarvill | Web Administrator | 40 |
| Blazej Niezabitowski | Project Planner | 50 |
| Yangyang Yin | Project Planner | 40 |

## Schedule

| ID | WBS | Task | Type | Duration | Start | Finish | Predecessors | Baseline start | Baseline finish | Baseline duration | Total slack | Free slack | Constraint | Resources | Work | Cost | Baseline cost |
| --- | --- | --- | --- | --- | --- | --- | --- | --- | --- | --- | --- | --- | --- | --- | --- | --- | --- |
| 1 | 1 | **Stage 1** |  | 34d? | 2020-10-12 | 2020-11-26 |  | 2017-10-30 | 2018-02-23 | 69.71d |  |  |  |  | 1547h | 61,145 | 18,440 |
| 2 | 1.1 | Project costing |  | 7d? | 2020-10-16 | 2020-10-26 |  |  |  |  | 146d | 13d | finish no earlier than 2020-10-26 | Aimee Laing | 49h | 1,715 |  |
| 3 | 1.2 | Project plan creation |  | 11d? | 2020-10-16 | 2020-10-30 |  |  |  |  | 142d | 9d | finish no earlier than 2020-10-30 | Autumn Lark; Blazej Niezabitowski; Yangyang Yin | 231h | 9,625 |  |
| 4 | 1.3 | Assessment of risks |  | 6d? | 2020-10-16 | 2020-10-23 |  |  |  |  | 147d | 14d | finish no earlier than 2020-10-23 | Hannah McCarvill | 42h | 1,680 |  |
| 5 | 1.4 | Analyse requirements |  | 11d? | 2020-10-16 | 2020-10-30 |  |  |  |  | 154d |  | finish no earlier than 2020-10-30 | Aimee Laing; Andrew Coburn; Autumn Lark; Blazej Niezabitowski; Hannah McCarvill; James Lee; Yangyang Yin | 539h | 21,175 |  |
| 6 | 1.5 | Prepare storyboard for web pages |  | 11d | 2020-10-23 | 2020-11-06 |  |  |  |  | 90d | 0d | start no earlier than 2020-10-23 |  |  |  |  |
| 7 | 1.6 | Establish navigation map |  | 11d | 2020-10-23 | 2020-11-06 |  |  |  |  | 90d | 0d | start no earlier than 2020-10-23 |  |  |  |  |
| 8 | 1.7 | First Report Draft |  | 14d | 2020-11-09 | 2020-11-26 | 2, 3, 4, 6, 7, 5 |  |  |  | 90d |  | start no earlier than 2020-11-09 | Aimee Laing; Andrew Coburn; Autumn Lark; Blazej Niezabitowski; Hannah McCarvill; James Lee; Yangyang Yin | 686h | 26,950 |  |
| 9 | 1.8 | Stage 1 Milestone | milestone | 0d | 2020-11-26 | 2020-11-26 |  | 2018-02-23 | 2018-02-23 | 0d | 90d |  | finish no earlier than 2020-11-26 |  |  |  |  |
| 10 | 2 | **Stage 2** |  | 45d? | 2020-12-04 | 2021-02-04 | 1 | 2018-02-23 | 2018-10-05 | 126.43d |  |  |  |  |  |  | 41,960 |
| 11 | 2.1 | Collect design documents |  | 7d | 2020-12-04 | 2020-12-14 |  |  |  |  | 1d | 0d |  |  |  |  |  |
| 12 | 2.2 | Develop website to meet design spec |  | 19d | 2020-12-15 | 2021-01-08 | 11 |  |  |  | 1d | 0d |  |  |  |  |  |
| 13 | 2.3 | Prepare test strategy |  | 7d | 2021-01-11 | 2021-01-19 | 12 |  |  |  | 1d | 0d |  |  |  |  |  |
| 14 | 2.4 | Test website using prepared strategy |  | 4d | 2021-01-20 | 2021-01-25 | 13 |  |  |  | 1d | 0d |  |  |  |  |  |
| 15 | 2.5 | Collate a list of errors/defects |  | 4d | 2021-01-26 | 2021-01-29 | 14 |  |  |  | 1d | 0d |  |  |  |  |  |
| 16 | 2.6 | Give evidence of testing |  | 4d | 2021-02-01 | 2021-02-04 | 15 |  |  |  | 1d | 0d |  |  |  |  |  |
| 17 | 2.7 | Stage 2 Milestone | milestone | 0d | 2021-02-04 | 2021-02-04 | 16 | 2018-10-05 | 2018-10-05 | 0d | 1d |  |  |  |  |  |  |
| 18 | 3 | **Stage 3** |  | 40d? | 2021-02-06 | 2021-04-01 | 10 | 2018-10-05 | 2018-11-09 | 20.57d |  |  |  |  |  |  | 11,480 |
| 19 | 3.1 | Establish criteria to evaluate project |  | 13d | 2021-02-08 | 2021-02-24 |  |  |  |  | 0d |  |  |  |  |  |  |
| 20 | 3.2 | Gather evidence to support the evaluation |  | 13d | 2021-02-25 | 2021-03-15 | 19 |  |  |  | 0d |  |  |  |  |  |  |
| 21 | 3.3 | Document modifications |  | 13d | 2021-03-16 | 2021-04-01 | 20 |  |  |  | 0d |  |  |  |  |  |  |
| 22 | 3.4 | Stage 3 Milestone | milestone | 0d | 2021-04-01 | 2021-04-01 | 21 | 2018-11-09 | 2018-11-09 | 0d | 0d |  |  |  |  |  |  |
